# Projekat-USP

How a schedule from MS Project changed from version to version. A marks actual dates.

## Version 1 (saved 2019-07-04)

Note of the change: izmene

| ID | WBS | Task | Duration | Start | Finish | Predecessors | Total float | Constraint |
| --- | --- | --- | --- | --- | --- | --- | --- | --- |
| 1 | 1 | **WP1 - Analiza tržišta I korisničkih zahteva** | 89d | 2019-05-01 | 2019-09-01 |  |  |  |
| 2 | 1.1 | **Analiza trzista** | 44d | 2019-05-01 | 2019-07-01 |  | 0d |  |
| 3 | 1.1.1 | **Iniciranje analize tržišta** | 8d | 2019-05-01 | 2019-05-10 |  | 0d |  |
| 4 |  | Izdvajanje zaposlenih za ovu fazu | 3d | 2019-05-01 | 2019-05-03 |  |  |  |
| 5 |  | One-page opis posla | 2d | 2019-05-06 | 2019-05-07 |  |  |  |
| 6 |  | Raspodela zaposlenih u timove | 1d | 2019-05-08 | 2019-05-08 | 4, 5 |  |  |
| 7 |  | Dokumentovanje aktivnosti | 2d | 2019-05-09 | 2019-05-10 | 5, 4, 6 |  |  |
| 8 | 1.1.2 | **Planiranje analize tržišta** | 15d | 2019-05-13 | 2019-05-31 | 3 | 0d |  |
| 9 |  | Definisanje svih zadataka koje treba uraditi unutar faze izvršavanja | 3d | 2019-05-13 | 2019-05-15 |  |  |  |
| 10 |  | Podela zadataka po timovima | 1d | 2019-05-16 | 2019-05-16 | 9 |  |  |
| 11 | 1.1.2.3 | **Priprema za analizu tržišta** | 9d | 2019-05-17 | 2019-05-29 |  | 0d |  |
| 12 |  | Pronalaženje adekvatnih izvora informacija | 2d | 2019-05-17 | 2019-05-20 | 10 |  |  |
| 13 |  | Priprema anketa za ispitanike | 3d | 2019-05-17 | 2019-05-21 | 10 |  |  |
| 14 |  | Piriprema softvera za analizu prikupljenih podataka | 3d | 2019-05-22 | 2019-05-24 | 13 |  |  |
| 15 |  | Pronalaženje i zakazivanje sastanaka sa ispitanicima | 3d | 2019-05-27 | 2019-05-29 | 14 |  |  |
| 16 |  | Dokumentovanje aktivnosti | 2d | 2019-05-30 | 2019-05-31 | 11, 9, 10 |  |  |
| 17 | 1.1.3 | **Izvršavanje analize tržišta** | 20d | 2019-06-03 | 2019-06-28 | 8 | 0d |  |
| 18 | 1.1.3.1 | **Prikupljanje podataka** | 12d | 2019-06-03 | 2019-06-18 |  | 0d |  |
| 19 |  | Prikupljanje podataka o slicnim projektima | 4d | 2019-06-03 | 2019-06-06 |  |  |  |
| 20 |  | Prikupljanje podataka sa relevantnih sajtova | 3d | 2019-06-07 | 2019-06-11 |  |  |  |
| 21 |  | Prikupljanje podataka iz naucnih magazina | 3d | 2019-06-10 | 2019-06-12 |  |  |  |
| 22 |  | Intervjuisanje fokus grupa | 5d | 2019-06-12 | 2019-06-18 |  |  |  |
| 23 |  | Sumiranje i analiza dobijenih informacija i pisanje izveštaja o tržištu | 5d | 2019-06-19 | 2019-06-25 | 18 |  |  |
| 24 |  | Pisanje studije izvodljivosti | 2d | 2019-06-26 | 2019-06-27 | 23 |  |  |
| 25 |  | Dokumentovanje aktivnosti | 1d | 2019-06-28 | 2019-06-28 | 18, 23, 24 |  |  |
| 26 | 1.1.4 | **Monitoring i kontrola analize trzista** | 44d | 2019-05-01 | 2019-07-01 |  | 0d |  |
| 27 |  | Uspostavljanje sistema za praćenje | 5d | 2019-05-01 | 2019-05-07 | 3SS |  |  |
| 28 |  | Pracenje napretka | 20d | 2019-06-03 | 2019-06-28 | 17SS |  |  |
| 29 |  | Izvestavanje o napretku | 20d | 2019-06-03 | 2019-06-28 | 17SS |  |  |
| 30 |  | Otkrivanje i resavanje problema | 20d | 2019-06-03 | 2019-06-28 | 17SS |  |  |
| 31 |  | Dokumentovanje aktivnosti | 1d | 2019-07-01 | 2019-07-01 |  |  |  |
| 32 | 1.1.5 | **Zavrsetak analize tržišta** | 1d | 2019-07-01 | 2019-07-01 | 17 | 0d |  |
| 33 |  | Pisanje zavrsnog izvestaja | 1d | 2019-07-01 | 2019-07-01 |  |  |  |
| 34 | 1.2 | **Analiza korisnickih zahteva** | 44d | 2019-07-01 | 2019-08-29 |  | 0d |  |
| 35 | 1.2.1 | **Iniciranje analize korisnickih zahteva** | 8d | 2019-07-01 | 2019-07-10 |  | 0d |  |
| 36 |  | Izdvajanje zaposlenih za ovu fazu | 3d | 2019-07-01 | 2019-07-03 |  |  |  |
| 37 |  | One-page opis posla | 2d | 2019-07-04 | 2019-07-05 |  |  | start no earlier than 2019-07-04 |
| 38 |  | Raspodela zaposlenih u timove | 1d | 2019-07-08 | 2019-07-08 | 36, 37 |  |  |
| 39 |  | Dokumentovanje aktivnosti | 2d | 2019-07-09 | 2019-07-10 | 36, 37, 38 |  |  |
| 40 | 1.2.2 | **Planiranje analize korisnickih zahteva** | 16d | 2019-07-11 | 2019-08-01 |  | 0d |  |
| 41 |  | Definisanje svih zadataka koje treba uraditi unutar faze izvršavanja | 3d | 2019-07-11 | 2019-07-15 |  |  |  |
| 42 |  | Podela zadataka po timovima | 1d | 2019-07-16 | 2019-07-16 | 41 |  |  |
| 43 | 1.2.2.3 | **Priprema za analizu korisničkih zahteva** | 10d | 2019-07-17 | 2019-07-30 |  | 0d |  |
| 44 |  | Priprema anketa za ispitanike | 3d | 2019-07-17 | 2019-07-19 | 42 |  |  |
| 45 |  | Piriprema softvera za analizu prikupljenih podataka | 3d | 2019-07-22 | 2019-07-24 | 44 |  |  |
| 46 |  | Pronalaženje i zakazivanje sastanaka sa ispitanicima | 4d | 2019-07-25 | 2019-07-30 | 45 |  |  |
| 47 |  | Dokumentovanje aktivnosti | 2d | 2019-07-31 | 2019-08-01 | 43 |  |  |
| 48 | 1.2.3 | **Izvršavanje analize korisničkih zahteva** | 19d | 2019-08-02 | 2019-08-28 | 40 | 0d |  |
| 49 |  | Formiranje fokus grupa | 2d | 2019-08-02 | 2019-08-05 |  |  |  |
| 50 |  | Intevjuisanje fokus grupa | 3d | 2019-08-06 | 2019-08-08 | 49 |  |  |
| 51 |  | Izdvajanje korisnika za individualne intervjue | 2d | 2019-08-08 | 2019-08-09 |  |  |  |
| 52 |  | Individualna intervjuisanja | 3d | 2019-08-12 | 2019-08-14 | 51 |  |  |
| 53 |  | Dokumentovanje svih korisnickih zahteva | 3d | 2019-08-15 | 2019-08-19 | 50, 52 |  |  |
| 54 |  | Analiza funkcionalnosti | 3d | 2019-08-20 | 2019-08-22 | 53 |  |  |
| 55 |  | Pisanje scenarija slučajeva korišćenja | 3d | 2019-08-23 | 2019-08-27 | 54 |  |  |
| 56 |  | Dokumentovanje aktivnosti | 1d | 2019-08-28 | 2019-08-28 | 53, 55 |  |  |
| 57 | 1.2.4 | **Monitoring I kontrola analize korisničkih zahteva** | 44d | 2019-07-01 | 2019-08-29 |  | 0d |  |
| 58 |  | Uspostavljanje sistema za praćenje | 5d | 2019-07-01 | 2019-07-05 | 35SS |  |  |
| 59 |  | Praćenje napretka | 19d | 2019-08-02 | 2019-08-28 | 48SS |  |  |
| 60 |  | Izvestavanje o napretku | 19d | 2019-08-02 | 2019-08-28 | 48SS |  |  |
| 61 |  | Otkrivanje i resavanje problema | 19d | 2019-08-02 | 2019-08-28 | 48SS |  |  |
| 62 |  | Dokumentovanje aktivnosti | 1d | 2019-08-29 | 2019-08-29 |  |  |  |
| 63 | 1.2.5 | **Završetak analize korisničkih zahteva** | 1d | 2019-08-29 | 2019-08-29 | 48 | 0d |  |
| 64 |  | Pisanje zavrsnog izvestaja | 1d | 2019-08-29 | 2019-08-29 |  |  |  |
| 65 |  | Dobijanje odobrenja od višeg menadžmenta | 1d | 2019-08-30 | 2019-08-30 | 2, 34 |  |  |
| 66 |  | Dokumentovana analiza tržišta i korisničkih zahteva | 0d | 2019-09-02 | 2019-09-02 | 1 |  |  |
| 67 | 3 | **WP2 - Planiranje projekta** | 66d | 2019-09-02 | 2019-12-01 | 1 |  |  |
| 68 | 3.1 | **Formiranje rasporeda za realizaciju projekta** | 20d | 2019-09-02 | 2019-09-27 |  | 0d |  |
| 69 |  | Definisati sve potrebne zadatke u realizaciji projekta | 10d | 2019-09-02 | 2019-09-13 |  |  |  |
| 70 |  | Proceniti trajanje projektnih faza | 5d | 2019-09-16 | 2019-09-20 | 69 |  |  |

| ID | WBS | Task | Duration | Start | Finish | Predecessors | Total float |
| --- | --- | --- | --- | --- | --- | --- | --- |
| 71 |  | Definisati raspored izvršavanja | 5d | 2019-09-23 | 2019-09-27 | 69, 70 |  |
| 72 | 3.2 | **Planiranje resursa** | 15d | 2019-09-30 | 2019-10-18 | 68 | 0d |
| 73 |  | Definisanje broja potrebnog osoblja | 5d | 2019-09-30 | 2019-10-04 |  |  |
| 74 |  | Definisanje zahteva za opremom | 10d | 2019-10-07 | 2019-10-18 |  |  |
| 75 | 3.3 | **Planiranje budžeta** | 20d | 2019-10-21 | 2019-11-15 | 72 | 0d |
| 76 |  | Definisanje plata zaposlenih | 5d | 2019-10-21 | 2019-10-25 |  |  |
| 77 |  | Definisanje troškova za opremu | 10d | 2019-10-28 | 2019-11-08 |  |  |
| 78 |  | Definisanje ostalih troškova | 3d | 2019-11-11 | 2019-11-13 |  |  |
| 79 |  | Sumiranje troškova | 2d | 2019-11-14 | 2019-11-15 |  |  |
| 80 |  | Raspodela posla po participantima | 3d | 2019-11-18 | 2019-11-20 | 68 |  |
| 81 |  | Planiranje rizika | 3d | 2019-11-21 | 2019-11-25 | 68 |  |
| 82 |  | Dokumentovati projektni plan | 3d | 2019-11-26 | 2019-11-28 | 68, 72, 75, 81 |  |
| 83 |  | Dobijanje odobrenja od višeg menadžmenta | 1d | 2019-11-29 | 2019-11-29 | 82 |  |
| 84 |  | Izrađen projektni plan | 0d | 2019-12-02 | 2019-12-02 | 67 |  |
| 85 | 5 | **WP3 - Modelovanje arhitekture i dizajn sistema** | 110d | 2019-12-02 | 2020-05-01 | 67 |  |
| 86 | 5.1 | **Modelovanje I dizajn veb-portala** | 53d | 2019-12-02 | 2020-02-12 |  | 0d |
| 87 |  | Dizajniranje izgleda veb-portala | 30d | 2019-12-02 | 2020-01-10 |  |  |
| 88 |  | UML projektovanje veb-portala | 19d | 2020-01-13 | 2020-02-06 |  |  |
| 89 |  | Dokumentovanje dizajna veb-portala | 4d | 2020-02-07 | 2020-02-12 |  |  |
| 90 | 5.2 | **Modelovanje I dizajn hardvera** | 53d | 2020-02-13 | 2020-04-27 |  | 0d |
| 91 |  | Dizajniranje hardvera | 30d | 2020-02-13 | 2020-03-25 |  |  |
| 92 |  | UML projektovanje hardvera | 19d | 2020-03-26 | 2020-04-21 |  |  |
| 93 |  | Izrada fizičkog mini modela hardvera | 23d | 2020-03-26 | 2020-04-27 |  |  |
| 94 |  | Dokumentovanje modelovanja I dizajniranja sistema | 3d | 2020-04-28 | 2020-04-30 | 86, 90 |  |
| 95 |  | Završeno modelovanje i dizajn sistema | 0d | 2020-05-02 | 2020-05-02 | 85 |  |
| 96 | 7 | **WP4 - Izrada prototipa veb-portala i prototipa hardvera** | 66d | 2020-05-04 | 2020-08-01 | 85, 67 |  |
| 97 | 7.1 | **Izrada prototipa veb-portala** | 24d | 2020-05-04 | 2020-06-04 |  | 0d |
| 98 |  | Izrada stranica za korisnike, službenike I administratore | 20d | 2020-05-04 | 2020-05-29 |  |  |
| 99 |  | Validacija prototipa veb-portala | 4d | 2020-06-01 | 2020-06-04 |  |  |
| 100 | 7.2 | **Izrada prototipa hardvera** | 41d | 2020-06-05 | 2020-07-31 |  | 0d |
| 101 |  | Izrada prototipa hardvera | 20d | 2020-06-05 | 2020-07-02 |  |  |
| 102 |  | Izrada interfejsa prema softverskoj komponenti | 11d | 2020-07-03 | 2020-07-17 |  |  |
| 103 |  | Izrada grafičkog korisničkog interfejsa | 10d | 2020-07-20 | 2020-07-31 |  |  |
| 104 |  | Izrađen prototip oba dela sistema | 0d | 2020-08-03 | 2020-08-03 | 96 |  |
| 105 | 9 | **WP5 - Implementacija veb-portala i hardvera** | 174d | 2020-08-03 | 2021-04-01 | 96 |  |
| 106 | 9.1 | **Implementacija veb-portala** | 80d | 2020-08-03 | 2020-11-20 |  | 0d |
| 107 |  | Forntend implementacija | 35d | 2020-08-03 | 2020-09-18 |  |  |
| 108 |  | Backend implementacija | 35d | 2020-09-21 | 2020-11-06 |  |  |
| 109 |  | Integracija ovih delova | 10d | 2020-11-09 | 2020-11-20 | 107, 108 |  |
| 110 | 9.2 | **Implementacija hardvera** | 85d | 2020-11-23 | 2021-03-19 |  | 0d |
| 111 |  | Implementacija pojedinacnih delova hardvera | 65d | 2020-11-23 | 2021-02-19 |  |  |
| 112 |  | Integracija svih delova hardvera | 20d | 2021-02-22 | 2021-03-19 | 111 |  |
| 113 |  | Kreiranje korisničkog uputstva | 8d | 2021-03-22 | 2021-03-31 | 106, 110 |  |
| 114 |  | Implementirana oba dela sistema | 0d | 2021-04-02 | 2021-04-02 | 105 |  |
| 115 | 11 | **WP6 - Testiranje veb-portala i hardvera** | 131d | 2021-04-02 | 2021-10-01 | 105 |  |
| 116 | 11.1 | **Testiranje veb-portala** | 64d | 2021-04-02 | 2021-06-30 |  | 0d |
| 117 |  | Izrada testova | 10d | 2021-04-02 | 2021-04-15 |  |  |
| 118 |  | Pokretanje testova | 20d | 2021-04-16 | 2021-05-13 | 117 |  |
| 119 |  | Ispravljanje pronađenih defekata | 25d | 2021-05-14 | 2021-06-17 | 118 |  |
| 120 |  | Kreiranje izveštaja | 9d | 2021-06-18 | 2021-06-30 | 117, 118, 119 |  |
| 121 | 11.2 | **Testiranje hardvera** | 63d | 2021-07-01 | 2021-09-27 |  | 0d |
| 122 |  | Izrada testova | 10d | 2021-07-01 | 2021-07-14 |  |  |
| 123 |  | Pokretanje testova | 20d | 2021-07-15 | 2021-08-11 | 122 |  |
| 124 |  | Ispravljanje pronađenih defekata | 25d | 2021-08-12 | 2021-09-15 | 123 |  |
| 125 |  | Kreiranje izveštaja | 8d | 2021-09-16 | 2021-09-27 | 122, 123, 124 |  |
| 126 |  | Kreiranje konačnog izveštaja o testiranju | 3d | 2021-09-28 | 2021-09-30 | 116, 121 |  |
| 127 |  | Testirani delovi sistema | 0d | 2021-10-04 | 2021-10-04 | 115 |  |
| 128 | 13 | **WP7 - Integracija hardvera i softvera** | 65d | 2021-10-04 | 2021-12-31 | 115, 105 |  |
| 129 |  | Integracija sistema | 60d | 2021-10-04 | 2021-12-24 |  |  |
| 130 |  | Dokumentovanje integracije sistema | 5d | 2021-12-27 | 2021-12-31 | 129 |  |
| 131 |  | Integrisan sistem | 1d | 2022-01-03 | 2022-01-03 | 128 |  |
| 132 | 15 | **WP8 - Integraciono testiranje** | 86d | 2022-01-03 | 2022-05-01 | 128 |  |
| 133 |  | Izrada testova | 20d | 2022-01-03 | 2022-01-28 |  |  |
| 134 |  | Pokretanje testova | 30d | 2022-01-31 | 2022-03-11 | 133 |  |
| 135 |  | Ispravljanje pronađenih defekata | 30d | 2022-03-14 | 2022-04-22 | 134 |  |
| 136 |  | Kreiranje izveštaja | 5d | 2022-04-25 | 2022-04-29 | 133, 134, 135 |  |
| 137 |  | Testiran sistem | 0d | 2022-05-02 | 2022-05-02 | 132 |  |
| 138 | 17 | **WP9 - Evaluacija i disiminacija** | 45d | 2022-03-01 | 2022-05-01 | 128 |  |
| 139 |  | Prikupljanje utisaka korisnika | 15d | 2022-03-01 | 2022-03-21 |  |  |
| 140 |  | Kreiranje markentiškog plana | 5d | 2022-03-22 | 2022-03-28 | 139 |  |

| ID | WBS | Task | Duration | Start | Finish | Predecessors | Total float | Constraint |
| --- | --- | --- | --- | --- | --- | --- | --- | --- |
| 141 | 17.3 | **Promovisanje proizvoda** | 25d | 2022-03-28 | 2022-04-29 | 140 | 0d |  |
| 142 |  | Internet marketing | 25d | 2022-03-28 | 2022-04-29 |  |  | start no earlier than 2022-03-28 |
| 143 |  | TV marketnig | 25d | 2022-03-28 | 2022-04-29 |  |  |  |
| 144 |  | Učestvovanje na sajmovima I konferencijama | 25d | 2022-03-28 | 2022-04-29 |  |  |  |
| 145 |  | Završena evaluacija i disiminacija | 0d | 2022-05-02 | 2022-05-02 | 138 |  |  |
| 146 | 19 | **WP10 - Upravljanje projektom** | 784d | 2019-05-01 | 2022-05-01 |  |  |  |
| 147 |  | Upravljanje obimom posla | 154d | 2019-05-01 | 2019-12-02 |  |  |  |
| 148 |  | Upravljanje vremenom | 154d | 2019-05-01 | 2019-12-02 |  |  |  |
| 149 |  | Uspravljanje rizicima | 740d | 2019-05-01 | 2022-03-01 |  |  |  |
| 150 |  | Upravljanje kvalitetom | 629d | 2019-12-03 | 2022-04-29 |  |  |  |
| 151 |  | Upravljanje rashodima | 66d | 2019-09-02 | 2019-12-02 |  |  |  |
| 152 |  | Upravljanje ljudskim resursima | 66d | 2019-09-02 | 2019-12-02 |  |  |  |
| 153 |  | Upravljanje komunikacijom | 783d | 2019-05-01 | 2022-04-29 |  |  |  |
| 154 | 19.8 | **Sastanci** | 784d | 2019-05-01 | 2022-05-01 |  |  |  |
| 155 | 19.8.1 | **Mesečni sastanak** | 783d | 2019-05-01 | 2022-05-01 |  | 0d |  |
| 156 |  | Mesečni sastanak 1 | 1d | 2019-05-01 | 2019-05-01 |  |  | start no earlier than 2019-05-01 |
| 157 |  | Mesečni sastanak 2 | 1d | 2019-06-01 | 2019-06-01 |  |  | start no earlier than 2019-06-01 |
| 158 |  | Mesečni sastanak 3 | 1d | 2019-07-01 | 2019-07-01 |  |  | start no earlier than 2019-07-01 |
| 159 |  | Mesečni sastanak 4 | 1d | 2019-08-01 | 2019-08-01 |  |  | start no earlier than 2019-08-01 |
| 160 |  | Mesečni sastanak 5 | 1d | 2019-09-01 | 2019-09-01 |  |  | start no earlier than 2019-09-01 |
| 161 |  | Mesečni sastanak 6 | 1d | 2019-10-01 | 2019-10-01 |  |  | start no earlier than 2019-10-01 |
| 162 |  | Mesečni sastanak 7 | 1d | 2019-11-01 | 2019-11-01 |  |  | start no earlier than 2019-11-01 |
| 163 |  | Mesečni sastanak 8 | 1d | 2019-12-01 | 2019-12-01 |  |  | start no earlier than 2019-12-01 |
| 164 |  | Mesečni sastanak 9 | 1d | 2020-01-01 | 2020-01-01 |  |  | start no earlier than 2020-01-01 |
| 165 |  | Mesečni sastanak 10 | 1d | 2020-02-01 | 2020-02-01 |  |  | start no earlier than 2020-02-01 |
| 166 |  | Mesečni sastanak 11 | 1d | 2020-03-01 | 2020-03-01 |  |  | start no earlier than 2020-03-01 |
| 167 |  | Mesečni sastanak 12 | 1d | 2020-04-01 | 2020-04-01 |  |  | start no earlier than 2020-04-01 |
| 168 |  | Mesečni sastanak 13 | 1d | 2020-05-01 | 2020-05-01 |  |  | start no earlier than 2020-05-01 |
| 169 |  | Mesečni sastanak 14 | 1d | 2020-06-01 | 2020-06-01 |  |  | start no earlier than 2020-06-01 |
| 170 |  | Mesečni sastanak 15 | 1d | 2020-07-01 | 2020-07-01 |  |  | start no earlier than 2020-07-01 |
| 171 |  | Mesečni sastanak 16 | 1d | 2020-08-01 | 2020-08-01 |  |  | start no earlier than 2020-08-01 |
| 172 |  | Mesečni sastanak 17 | 1d | 2020-09-01 | 2020-09-01 |  |  | start no earlier than 2020-09-01 |
| 173 |  | Mesečni sastanak 18 | 1d | 2020-10-01 | 2020-10-01 |  |  | start no earlier than 2020-10-01 |
| 174 |  | Mesečni sastanak 19 | 1d | 2020-11-01 | 2020-11-01 |  |  | start no earlier than 2020-11-01 |
| 175 |  | Mesečni sastanak 20 | 1d | 2020-12-01 | 2020-12-01 |  |  | start no earlier than 2020-12-01 |
| 176 |  | Mesečni sastanak 21 | 1d | 2021-01-01 | 2021-01-01 |  |  | start no earlier than 2021-01-01 |
| 177 |  | Mesečni sastanak 22 | 1d | 2021-02-01 | 2021-02-01 |  |  | start no earlier than 2021-02-01 |
| 178 |  | Mesečni sastanak 23 | 1d | 2021-03-01 | 2021-03-01 |  |  | start no earlier than 2021-03-01 |
| 179 |  | Mesečni sastanak 24 | 1d | 2021-04-01 | 2021-04-01 |  |  | start no earlier than 2021-04-01 |
| 180 |  | Mesečni sastanak 25 | 1d | 2021-05-01 | 2021-05-01 |  |  | start no earlier than 2021-05-01 |
| 181 |  | Mesečni sastanak 26 | 1d | 2021-06-01 | 2021-06-01 |  |  | start no earlier than 2021-06-01 |
| 182 |  | Mesečni sastanak 27 | 1d | 2021-07-01 | 2021-07-01 |  |  | start no earlier than 2021-07-01 |
| 183 |  | Mesečni sastanak 28 | 1d | 2021-08-01 | 2021-08-01 |  |  | start no earlier than 2021-08-01 |
| 184 |  | Mesečni sastanak 29 | 1d | 2021-09-01 | 2021-09-01 |  |  | start no earlier than 2021-09-01 |
| 185 |  | Mesečni sastanak 30 | 1d | 2021-10-01 | 2021-10-01 |  |  | start no earlier than 2021-10-01 |
| 186 |  | Mesečni sastanak 31 | 1d | 2021-11-01 | 2021-11-01 |  |  | start no earlier than 2021-11-01 |
| 187 |  | Mesečni sastanak 32 | 1d | 2021-12-01 | 2021-12-01 |  |  | start no earlier than 2021-12-01 |
| 188 |  | Mesečni sastanak 33 | 1d | 2022-01-01 | 2022-01-01 |  |  | start no earlier than 2022-01-01 |
| 189 |  | Mesečni sastanak 34 | 1d | 2022-02-01 | 2022-02-01 |  |  | start no earlier than 2022-02-01 |
| 190 |  | Mesečni sastanak 35 | 1d | 2022-03-01 | 2022-03-01 |  |  | start no earlier than 2022-03-01 |
| 191 |  | Mesečni sastanak 36 | 1d | 2022-04-01 | 2022-04-01 |  |  | start no earlier than 2022-04-01 |
| 192 |  | Mesečni sastanak 37 | 1d | 2022-05-01 | 2022-05-01 |  |  | start no earlier than 2022-05-01 |
| 193 |  | Zatvaranje projekta | 6d | 2022-04-25 | 2022-05-01 |  |  |  |
| 194 |  | Završen projekat | 0d | 2021-05-01 | 2021-05-01 |  |  |  |

## Version 2 (saved 2019-07-04)

Note of the change: update prototip

Last finish stays 2022-05-02.

Changed:

| ID | Task | Start | Finish | Predecessors |
| --- | --- | --- | --- | --- |
| 194 | Završen projekat | 2021-05-01 → 2022-05-01 (+365d) | 2021-05-01 → 2022-05-01 (+365d) | none → 193 |
